| id | phase_id | component_id | section_id | name | trade | kind | duration_days | crew_size | pre_construction_offset_working_days | lead_up_working_days | derived_from | scheduled_start | scheduled_end | earliest_start | latest_start | float_days | status | lead_time_days | binding_successors_of_this | depends_on | binding_predecessors |
| --- | --- | --- | --- | --- | --- | --- | --- | --- | --- | --- | --- | --- | --- | --- | --- | --- | --- | --- | --- | --- | --- |
| general.permitting | pre_construction | permits_and_planning | general_conditions | Building permit walk-in | general | work | 1 | 1 | 15 | 2 | general_conditions 4A Permit walk-in ~3 weeks before on-site start; Will pulls same-day ~90%. | 2026-09-21 | 2026-09-21 | 2026-09-21 | 2026-10-20 | 21 | not_started |  |  |  |  |
| general.pre_construction_walkthrough | pre_construction | permits_and_planning | general_conditions | Pre-construction walkthrough with customer | pm | work | 0.5 | 1 | 10 | 1 | general_conditions PM walkthrough with owner to confirm scope 2 weeks before on-site. | 2026-09-28 | 2026-09-28 | 2026-09-28 | 2027-01-13 | 70 | not_started |  |  |  |  |
| permit.tdec_septic | pre_construction | tdec_septic | general_conditions | TDEC septic permit process | general | lead_time | 0 | 0 | 30 | 0 | general_conditions addition-TDEC Scope adds bedroom + bath and explicitly mentions TDEC/septic evaluation. 6-week lead, pinned to start of PC via offset. | 2026-08-28 | 2026-10-09 | 2026-08-28 | 2026-09-10 | 8.5 | not_started | 42 |  |  |  |
| prep.amperage_check | pre_construction | amperage_check | electrical | Verify existing service amperage for subpanel | general | work | 0.5 | 1 | 15 | 1 | electrical addition-amperage-check Subpanel in scope; must confirm existing main service can support new load. | 2026-09-21 | 2026-09-21 | 2026-09-21 | 2026-11-20 | 42.5 | not_started |  |  |  |  |
| checkpoint.selections_finalized | pre_construction | checkpoints | general_conditions | Customer selections finalized | general | milestone | 0 | 0 | 15 | 5 | general_conditions 4P Selections must be locked 3 weeks before on-site to gate finish material orders. | 2026-09-21 | 2026-09-21 | 2026-09-21 | 2026-12-01 | 47.5 | not_started |  | order.lvt FS 0 2026-10-12 2026-10-12, order.paint FS 0 2026-10-12 2026-10-12, order.tile FS 0 2026-10-12 2026-10-12, order.vanity FS 0 2026-10-12 2026-10-12 |  |  |
| checkpoint.equipment_confirmed_demo | pre_construction | checkpoints | demolition_site_work | Confirm demo equipment reserved | general | milestone | 0 | 0 | 10 | 2 | demolition_site_work 4O 2-week-out equipment confirmation for demo phase. | 2026-09-28 | 2026-09-28 | 2026-09-28 | 2027-01-13 | 70.5 | not_started |  |  |  |  |
| checkpoint.equipment_confirmed_excavation | pre_construction | checkpoints | excavation_foundation | Confirm mini-excavator reserved | general | milestone | 0 | 0 | 10 | 2 | excavation_foundation 4O 2-week-out equipment confirmation for excavation. | 2026-09-28 | 2026-09-28 | 2026-09-28 | 2027-01-13 | 70.5 | not_started |  |  |  |  |
| customer.contact_zach | pre_construction | customer_payment_prep | general_conditions | Call Zach (John's brother) — request $6,150 first payment | pm | work | 1 | 1 | 1 | 0 | general_conditions PM-notes PM note: call Zach by phone the day before job start, request $1,250 first payment. | 2026-10-09 | 2026-10-09 | 2026-10-09 | 2027-01-12 | 60.5 | not_started |  |  |  |  |
| order.windows | procurement_long_leads | procurement_windows | windows_doors_weatherproofing | Order windows & exterior door | general | work | 0.5 | 1 |  | 2 | windows_doors_weatherproofing 4R 3-task pattern step 1. Windows (3x 36x60 + transom) + 1 ext door. | 2026-10-12 | 2026-10-12 | 2026-10-12 | 2026-10-26 | 10 | not_started |  | wait.windows FS 0 2026-10-13 2026-11-02 |  |  |
| wait.windows | procurement_long_leads | procurement_windows | windows_doors_weatherproofing | Windows & door supplier delivery window | general | lead_time | 0 | 0 |  | 0 | windows_doors_weatherproofing 4R Stock windows 21-day supplier lead. | 2026-10-13 | 2026-11-02 | 2026-10-13 | 2026-10-26 | 9.5 | not_started | 21 | checkpoint.windows_arrived FS 0 2026-11-03 2026-11-03 | order.windows FS | order.windows FS 0 |
| checkpoint.windows_arrived | procurement_long_leads | procurement_windows | windows_doors_weatherproofing | Windows & door on site | general | milestone | 0 | 0 |  | 0 | windows_doors_weatherproofing 4R Arrival checkpoint gates windows.install. | 2026-11-03 | 2026-11-03 | 2026-11-03 | 2026-11-18 | 9.5 | not_started |  |  | wait.windows FS | wait.windows FS 0 |
| order.lvl | procurement_long_leads | procurement_lvl | structural_modifications | Order 3-ply 14" LVL beam | general | work | 0.5 | 1 |  | 2 | structural_modifications 4R LVL beam procurement. Default 14-day safety window. | 2026-10-12 | 2026-10-12 | 2026-10-12 | 2026-11-05 | 18 | not_started |  | wait.lvl FS 0 2026-10-13 2026-10-26 |  |  |
| wait.lvl | procurement_long_leads | procurement_lvl | structural_modifications | LVL supplier delivery window | general | lead_time | 0 | 0 |  | 0 | structural_modifications addition-LVL Standard LVL 1-3 week lead; 14 calendar safety default. | 2026-10-13 | 2026-10-26 | 2026-10-13 | 2026-11-05 | 17.5 | not_started | 14 | checkpoint.lvl_arrived FS 0 2026-10-27 2026-10-27 | order.lvl FS | order.lvl FS 0 |
| checkpoint.lvl_arrived | procurement_long_leads | procurement_lvl | structural_modifications | LVL beam on site | general | milestone | 0 | 0 |  | 0 | structural_modifications 4R Arrival checkpoint gates structural.install_lvl. | 2026-10-27 | 2026-10-27 | 2026-10-27 | 2026-11-23 | 17.5 | not_started |  | structural.install_lvl FS 0 2026-10-27 2026-10-28 | wait.lvl FS | wait.lvl FS 0 |
| order.subpanel | procurement_long_leads | procurement_subpanel | electrical | Order 100A subpanel | general | work | 0.5 | 1 |  | 2 | electrical 4R Subpanel procurement, 7-14 day lead. | 2026-10-12 | 2026-10-12 | 2026-10-12 | 2026-11-06 | 19.5 | not_started |  | wait.subpanel FS 0 2026-10-13 2026-10-22 |  |  |
| wait.subpanel | procurement_long_leads | procurement_subpanel | electrical | Subpanel supplier delivery | general | lead_time | 0 | 0 |  | 0 | electrical 4R Subpanel 10 calendar days. | 2026-10-13 | 2026-10-22 | 2026-10-13 | 2026-11-10 | 19 | not_started | 10 | checkpoint.subpanel_arrived FS 0 2026-10-23 2026-10-23 | order.subpanel FS | order.subpanel FS 0 |
| checkpoint.subpanel_arrived | procurement_long_leads | procurement_subpanel | electrical | Subpanel on site | general | milestone | 0 | 0 |  | 0 | electrical 4R Arrival gates electrical.rough_in. | 2026-10-23 | 2026-10-23 | 2026-10-23 | 2026-11-23 | 19 | not_started |  |  | wait.subpanel FS | wait.subpanel FS 0 |
| order.minisplit | procurement_long_leads | procurement_minisplit | hvac | Order mini-split unit | general | work | 0.5 | 1 |  | 2 | hvac 4R Mini-split ordered close to dried-in. | 2026-10-12 | 2026-10-12 | 2026-10-12 | 2026-12-14 | 41.5 | not_started |  | wait.minisplit FS 0 2026-10-13 2026-10-26 |  |  |
| wait.minisplit | procurement_long_leads | procurement_minisplit | hvac | Mini-split supplier delivery | general | lead_time | 0 | 0 |  | 0 | hvac 4R 14 calendar days. | 2026-10-13 | 2026-10-26 | 2026-10-13 | 2026-12-15 | 41 | not_started | 14 | checkpoint.minisplit_arrived FS 0 2026-10-27 2026-10-27 | order.minisplit FS | order.minisplit FS 0 |
| checkpoint.minisplit_arrived | procurement_long_leads | procurement_minisplit | hvac | Mini-split on site | general | milestone | 0 | 0 |  | 0 | hvac 4R Gates hvac.minisplit_install. | 2026-10-27 | 2026-10-27 | 2026-10-27 | 2026-12-31 | 41 | not_started |  |  | wait.minisplit FS | wait.minisplit FS 0 |
| order.tankless | procurement_long_leads | procurement_tankless | hvac | Order tankless water heater | general | work | 0.5 | 1 |  | 2 | hvac 4R Tankless WH procurement per scope. | 2026-10-12 | 2026-10-12 | 2026-10-12 | 2026-11-06 | 19 | not_started |  | wait.tankless FS 0 2026-10-13 2026-10-22 |  |  |
| wait.tankless | procurement_long_leads | procurement_tankless | hvac | Tankless supplier delivery | general | lead_time | 0 | 0 |  | 0 | hvac 4R 10 calendar days for tankless. | 2026-10-13 | 2026-10-22 | 2026-10-13 | 2026-11-06 | 18.5 | not_started | 10 | checkpoint.tankless_arrived FS 0 2026-10-23 2026-10-23 | order.tankless FS | order.tankless FS 0 |
| checkpoint.tankless_arrived | procurement_long_leads | procurement_tankless | hvac | Tankless WH on site | general | milestone | 0 | 0 |  | 0 | hvac 4R Gates plumbing.tank_set. | 2026-10-23 | 2026-10-23 | 2026-10-23 | 2026-11-20 | 18.5 | not_started |  |  | wait.tankless FS | wait.tankless FS 0 |
| order.tile | procurement_long_leads | procurement_tile | master_bath | Order tile for master bath | general | work | 0.5 | 1 |  | 2 | master_bath 4R Tile order gated on selections finalized. | 2026-10-12 | 2026-10-12 | 2026-10-12 | 2026-12-01 | 32.5 | not_started |  | wait.tile FS 0 2026-10-13 2026-10-26 | checkpoint.selections_finalized FS | checkpoint.selections_finalized FS 0 |
| wait.tile | procurement_long_leads | procurement_tile | master_bath | Tile supplier delivery | general | lead_time | 0 | 0 |  | 0 | master_bath 4R 14 calendar days for tile. | 2026-10-13 | 2026-10-26 | 2026-10-13 | 2026-12-02 | 32 | not_started | 14 | checkpoint.tile_arrived FS 0 2026-10-27 2026-10-27 | order.tile FS | order.tile FS 0 |
| checkpoint.tile_arrived | procurement_long_leads | procurement_tile | master_bath | Tile on site | general | milestone | 0 | 0 |  | 0 | master_bath 4R Gates tile install. | 2026-10-27 | 2026-10-27 | 2026-10-27 | 2026-12-16 | 32 | not_started |  |  | wait.tile FS | wait.tile FS 0 |
| order.vanity | procurement_long_leads | procurement_vanity | master_bath | Order vanity + fixtures | general | work | 0.5 | 1 |  | 2 | master_bath 4R Vanity + fixtures per master bath scope. | 2026-10-12 | 2026-10-12 | 2026-10-12 | 2026-12-09 | 38.5 | not_started |  | wait.vanity FS 0 2026-10-13 2026-10-26 | checkpoint.selections_finalized FS | checkpoint.selections_finalized FS 0 |
| wait.vanity | procurement_long_leads | procurement_vanity | master_bath | Vanity supplier delivery | general | lead_time | 0 | 0 |  | 0 | master_bath 4R 14 calendar days. | 2026-10-13 | 2026-10-26 | 2026-10-13 | 2026-12-10 | 38 | not_started | 14 | checkpoint.vanity_arrived FS 0 2026-10-27 2026-10-27 | order.vanity FS | order.vanity FS 0 |
| checkpoint.vanity_arrived | procurement_long_leads | procurement_vanity | master_bath | Vanity + fixtures on site | general | milestone | 0 | 0 |  | 0 | master_bath 4R Gates cabinets.vanity_install. | 2026-10-27 | 2026-10-27 | 2026-10-27 | 2026-12-28 | 38 | not_started |  |  | wait.vanity FS | wait.vanity FS 0 |
| order.lvt | procurement_long_leads | procurement_lvt | interior_finish | Order LVT / flooring | general | work | 0.5 | 1 |  | 2 | interior_finish 4R Flooring procurement, use-date-minus-1-week. | 2026-10-12 | 2026-10-12 | 2026-10-12 | 2026-12-09 | 38.5 | not_started |  | wait.lvt FS 0 2026-10-13 2026-10-22 | checkpoint.selections_finalized FS | checkpoint.selections_finalized FS 0 |
| wait.lvt | procurement_long_leads | procurement_lvt | interior_finish | Flooring supplier delivery | general | lead_time | 0 | 0 |  | 0 | interior_finish 4R 10 calendar days. | 2026-10-13 | 2026-10-22 | 2026-10-13 | 2026-12-10 | 38 | not_started | 10 | checkpoint.lvt_arrived FS 0 2026-10-23 2026-10-23 | order.lvt FS | order.lvt FS 0 |
| checkpoint.lvt_arrived | procurement_long_leads | procurement_lvt | interior_finish | Flooring on site | general | milestone | 0 | 0 |  | 0 | interior_finish 4R Gates flooring.install. | 2026-10-23 | 2026-10-23 | 2026-10-23 | 2026-12-22 | 38 | not_started |  |  | wait.lvt FS | wait.lvt FS 0 |
| order.paint | procurement_long_leads | procurement_paint | interior_finish | Order paint | general | work | 0.5 | 1 |  | 0 | interior_finish 4R Paint short-lead; collapsed single order task ~1 week before phase 1. | 2026-10-12 | 2026-10-12 | 2026-10-12 | 2026-12-14 | 41.5 | not_started |  |  | checkpoint.selections_finalized FS | checkpoint.selections_finalized FS 0 |
| order.shower_glass_template | procurement_long_leads | procurement_shower_glass | master_bath | Template & order shower glass enclosure | general | work | 0.5 | 1 |  | 1 | master_bath 4R Glass templated after tile shower complete. | 2026-10-12 | 2026-10-12 | 2026-10-12 | 2026-12-30 | 51.5 | not_started |  | wait.shower_glass FS 0 2026-10-13 2026-10-22 |  |  |
| wait.shower_glass | procurement_long_leads | procurement_shower_glass | master_bath | Shower glass fabrication | general | lead_time | 0 | 0 |  | 0 | master_bath 4R 7-14 calendar days from template. | 2026-10-13 | 2026-10-22 | 2026-10-13 | 2026-12-31 | 51 | not_started | 10 | checkpoint.shower_glass_arrived FS 0 2026-10-23 2026-10-23 | order.shower_glass_template FS | order.shower_glass_template FS 0 |
| checkpoint.shower_glass_arrived | procurement_long_leads | procurement_shower_glass | master_bath | Shower glass ready to install | general | milestone | 0 | 0 |  | 0 | master_bath 4R Gates glass install. | 2026-10-23 | 2026-10-23 | 2026-10-23 | 2027-01-13 | 51 | not_started |  |  | wait.shower_glass FS | wait.shower_glass FS 0 |
| equipment.dumpster_arrive | site_prep | site_setup | demolition_site_work | Dumpster delivered | general | work | 0.5 | 1 |  | 0 | demolition_site_work 4O Dumpster arrives day before demo. | 2026-10-12 | 2026-10-12 | 2026-10-12 | 2026-10-19 | 5 | not_started |  | general.site_setup FS 0 2026-10-13 2026-10-13 |  |  |
| equipment.excavator_arrive | site_prep | site_setup | excavation_foundation | Mini-excavator delivered | general | work | 0.5 | 1 |  | 0 | excavation_foundation 4O Mini-ex arrives day before excavation. | 2026-10-12 | 2026-10-12 | 2026-10-12 | 2026-10-22 | 8 | not_started |  |  |  |  |
| general.site_setup | site_prep | site_setup | general_conditions | Site protection & setup | general | work | 0.5 | 2 |  | 2 | general_conditions Establish site protection, signage, staging. | 2026-10-13 | 2026-10-13 | 2026-10-13 | 2026-10-19 | 4.5 | not_started |  | prep.electrical_disconnect_relocate FS 0 2026-10-14 2026-10-14, prep.heat_pump_relocate FS 0 2026-10-14 2026-10-14 | equipment.dumpster_arrive FS | equipment.dumpster_arrive FS 0 |
| prep.heat_pump_relocate | site_prep | prep_work_before_demo | demolition_site_work | Relocate existing heat pump | hvac | work | 1 | 2 |  | 1 | demolition_site_work addition-heat-pump, 4K Heat pump in way of new footprint — relocated BEFORE demo, in site_prep. | 2026-10-14 | 2026-10-14 | 2026-10-14 | 2026-10-20 | 4 | not_started |  | demo.sawcut_walkway FS 0 2026-10-15 2026-10-15 | general.site_setup FS | general.site_setup FS 0 |
| prep.electrical_disconnect_relocate | site_prep | prep_work_before_demo | demolition_site_work | Relocate electrical disconnect | electrical | work | 0.5 | 2 |  | 1 | demolition_site_work addition-heat-pump Electrical disconnect must be moved before demo begins. | 2026-10-14 | 2026-10-14 | 2026-10-14 | 2026-10-20 | 4.5 | not_started |  |  | general.site_setup FS | general.site_setup FS 0 |
| demo.sawcut_walkway | demo_and_protection | demo_main | demolition_site_work | Saw cut & remove concrete walkway portions | demo | work | 1 | 3 |  | 2 | demolition_site_work Saw cut walkway, remove railroad ties + site obstructions. | 2026-10-15 | 2026-10-15 | 2026-10-15 | 2026-10-21 | 4 | not_started |  | demo.site_obstructions SS 0 2026-10-15 2026-10-15 | prep.heat_pump_relocate FS, prep.electrical_disconnect_relocate FS, general.permitting FS | prep.heat_pump_relocate FS 0 |
| demo.site_obstructions | demo_and_protection | demo_main | demolition_site_work | Remove railroad ties & site obstructions | demo | work | 1 | 3 |  | 0 | demolition_site_work Runs alongside walkway removal. | 2026-10-15 | 2026-10-15 | 2026-10-15 | 2026-10-21 | 4 | not_started |  | demo.expose_bearing_wall FS 0 2026-10-16 2026-10-16, demo.haul_out FS 0 2026-10-16 2026-10-16 | demo.sawcut_walkway SS 0 | demo.sawcut_walkway SS 0 |
| demo.expose_bearing_wall | demo_and_protection | demo_main | structural_modifications | Open existing load-bearing wall for LVL | demo | work | 1 | 3 |  | 1 | structural_modifications addition-LVL-subchain Expose existing bearing wall to prep LVL install. | 2026-10-16 | 2026-10-16 | 2026-10-16 | 2026-11-19 | 22.5 | not_started |  | structural.temp_shoring FS 0 2026-10-19 2026-10-19 | demo.site_obstructions FS | demo.site_obstructions FS 0 |
| demo.haul_out | demo_and_protection | demo_main | demolition_site_work | Haul-out debris | demo | work | 0.5 | 3 |  | 0 | demolition_site_work Debris removal. | 2026-10-16 | 2026-10-16 | 2026-10-16 | 2026-10-22 | 4 | not_started |  | excavation.dig FS 0 2026-10-19 2026-10-20 | demo.site_obstructions FS | demo.site_obstructions FS 0 |
| excavation.dig | structural_and_shell | foundation | excavation_foundation | Excavate for footings & basement | excavation | work | 2 | 2 |  | 2 | excavation_foundation addition-TDEC Excavation gated by TDEC completion. | 2026-10-19 | 2026-10-20 | 2026-10-19 | 2026-10-22 | 3.5 | not_started |  | foundation.form_and_prep FS 0 2026-10-21 2026-10-22 | demo.haul_out FS, equipment.excavator_arrive FS, permit.tdec_septic FS | demo.haul_out FS 0 |
| foundation.form_and_prep | structural_and_shell | foundation | excavation_foundation | Form footings + gravel + vapor barrier + rebar | concrete | work | 1.5 | 4 |  | 1 | excavation_foundation 4B Monolithic prep: forms + 4" gravel + vapor + rebar/wire mesh. | 2026-10-21 | 2026-10-22 | 2026-10-21 | 2026-10-26 | 3.5 | not_started |  | inspect.footing FS 1 2026-10-26 2026-10-26 | excavation.dig FS | excavation.dig FS 0 |
| inspect.footing | structural_and_shell | foundation | excavation_foundation | Footing inspection | inspector | inspection | 0.5 | 1 |  | 1 | excavation_foundation 4B Covers footings + slab prep for monolithic pour. | 2026-10-26 | 2026-10-26 | 2026-10-26 | 2026-10-29 | 3 | not_started |  | foundation.monolithic_pour FS 0 2026-10-27 2026-10-27 | foundation.form_and_prep FS 1 | foundation.form_and_prep FS 1 |
| foundation.monolithic_pour | structural_and_shell | foundation | excavation_foundation | Monolithic pour — footings + slab | concrete | work | 1 | 4 |  | 1 | excavation_foundation 4B Single monolithic pour per default. | 2026-10-27 | 2026-10-27 | 2026-10-27 | 2026-10-29 | 2.5 | not_started |  | foundation.cure FS 0 2026-10-28 2026-10-29 | inspect.footing FS | inspect.footing FS 0 |
| foundation.cure | structural_and_shell | foundation | excavation_foundation | Concrete cure | general | lead_time | 0 | 0 |  | 0 | excavation_foundation 4B 2 calendar day cure. | 2026-10-28 | 2026-10-29 | 2026-10-28 | 2026-10-30 | 2.5 | not_started | 2 | framing.basement_walls FS 0 2026-10-30 2026-11-02 | foundation.monolithic_pour FS | foundation.monolithic_pour FS 0 |
| framing.basement_walls | structural_and_shell | framing | framing | Frame basement walls 2x4 @16" | framing | work | 2 | 3 |  | 2 | framing Basement storage-level walls. | 2026-10-30 | 2026-11-02 | 2026-10-30 | 2026-11-03 | 2.5 | not_started |  | framing.floor_system FS 0 2026-11-03 2026-11-04 | foundation.cure FS | foundation.cure FS 0 |
| framing.floor_system | structural_and_shell | framing | framing | Frame second-floor system | framing | work | 2 | 3 |  | 1 | framing Dimensional lumber floor system + glued subfloor. | 2026-11-03 | 2026-11-04 | 2026-11-03 | 2026-11-05 | 2.5 | not_started |  | framing.exterior_walls FS 0 2026-11-05 2026-11-10 | framing.basement_walls FS | framing.basement_walls FS 0 |
| structural.temp_shoring | structural_and_shell | lvl_subchain | structural_modifications | Install temporary shoring | framing | work | 1 | 3 |  | 1 | structural_modifications addition-LVL-subchain Temp shoring for LVL retrofit; runs in parallel with new framing. | 2026-10-19 | 2026-10-19 | 2026-10-19 | 2026-11-20 | 22.5 | not_started |  |  | demo.expose_bearing_wall FS | demo.expose_bearing_wall FS 0 |
| structural.install_lvl | structural_and_shell | lvl_subchain | structural_modifications | Install 3-ply 14" LVL beam | framing | work | 2 | 3 |  | 1 | structural_modifications addition-LVL-subchain Install LVL after shoring and beam arrival. | 2026-10-27 | 2026-10-28 | 2026-10-27 | 2026-11-23 | 17.5 | not_started |  | structural.remove_temp_shoring FS 0 2026-10-29 2026-10-29 | structural.temp_shoring FS, checkpoint.lvl_arrived FS | checkpoint.lvl_arrived FS 0 |
| structural.remove_temp_shoring | structural_and_shell | lvl_subchain | structural_modifications | Remove temporary shoring | framing | work | 0.5 | 2 |  | 0 | structural_modifications addition-LVL-subchain Remove shoring after LVL loaded. | 2026-10-29 | 2026-10-29 | 2026-10-29 | 2026-11-25 | 17.5 | not_started |  |  | structural.install_lvl FS | structural.install_lvl FS 0 |
| framing.exterior_walls | structural_and_shell | framing | framing | Frame exterior & interior walls + elevator shaft | framing | work | 3 | 3 |  | 1 | framing 2x4 @16" walls + 4x4 elevator shaft framing. | 2026-11-05 | 2026-11-10 | 2026-11-05 | 2026-11-10 | 2.5 | not_started |  | framing.roof FS 0 2026-11-12 2026-11-16 | framing.floor_system FS | framing.floor_system FS 0 |
| framing.roof | structural_and_shell | framing | roof_framing_roofing | Frame new gable roof (stick) | framing | work | 3 | 3 |  | 1 | roof_framing_roofing addition-trusses Stick-frame default: small addition, ambiguous truss/rafter scope. | 2026-11-12 | 2026-11-16 | 2026-11-12 | 2026-11-16 | 2.5 | not_started |  | framing.sheathing FS -1 2026-11-16 2026-11-16, roof.concealed_buffer SS 1 2026-11-13 2026-11-17, windows.install FS -1 2026-11-16 2026-11-17 | framing.exterior_walls FS | framing.exterior_walls FS 0 |
| roof.concealed_buffer | structural_and_shell | roof_tie_in | roof_framing_roofing | Concealed roof tie-in discovery buffer | general | lead_time | 0 | 0 |  | 0 | roof_framing_roofing addition-roof-tie-in Buffer for concealed rafter conditions when tying into existing 6/12 roof. | 2026-11-13 | 2026-11-17 | 2026-11-13 | 2027-01-08 | 35.5 | not_started | 3 |  | framing.roof SS 1 | framing.roof SS 1 |
| framing.sheathing | structural_and_shell | framing | framing | Roof + wall sheathing | framing | work | 1 | 3 |  | 0 | framing Sheathing overlaps last day of roof framing. | 2026-11-16 | 2026-11-16 | 2026-11-16 | 2026-11-18 | 2.5 | not_started |  | roofing.underlayment FS 0 2026-11-17 2026-11-17 | framing.roof FS -1 | framing.roof FS -1 |
| roofing.underlayment | structural_and_shell | roofing | roof_framing_roofing | Roof underlayment + drip edge + flashing | roofing | work | 1 | 3 |  | 1 | roof_framing_roofing addition-MEP-gating Synthetic underlayment makes building weatherproof for MEPs. | 2026-11-17 | 2026-11-17 | 2026-11-17 | 2026-11-19 | 2.5 | not_started |  | roofing.shingles FS 0 2026-11-18 2026-11-18, electrical.rough_in FS 0 2026-11-18 2026-11-20, plumbing.tank_set FS 0 2026-11-18 2026-11-18 | framing.sheathing FS | framing.sheathing FS 0 |
| windows.install | structural_and_shell | envelope | windows_doors_weatherproofing | Install windows & exterior door | windows_doors | work | 2 | 2 |  | 1 | windows_doors_weatherproofing 4J, addition-windows Windows install as soon as roof framed, in parallel with underlayment. | 2026-11-16 | 2026-11-17 | 2026-11-16 | 2026-11-18 | 2.5 | not_started |  | electrical.rough_in FS 0 2026-11-18 2026-11-20, exterior.sheathing_wrb FS 0 2026-11-18 2026-11-18, plumbing.tank_set FS 0 2026-11-18 2026-11-18 | framing.roof FS -1, checkpoint.windows_arrived FS | framing.roof FS -1 |
| roofing.shingles | structural_and_shell | roofing | roof_framing_roofing | Install architectural shingles + ridge vent | roofing | work | 1 | 3 |  | 0 | roof_framing_roofing Small addition roof, 1 day. | 2026-11-18 | 2026-11-18 | 2026-11-18 | 2027-01-06 | 30 | not_started |  | electrical.gas_wh_vent FS 0 2026-11-19 2026-11-19, roofing.trim_gutters FS 0 2026-11-19 2026-11-20, milestone.dried_in FS 0 2026-11-19 2026-11-19 | roofing.underlayment FS | roofing.underlayment FS 0 |
| roofing.trim_gutters | structural_and_shell | exterior_finishes | exterior_finishes | Fascia + soffit + seamless gutters | siding | work | 1.5 | 3 |  | 1 | exterior_finishes same-crew-exterior Same siding crew does trim/gutters as continuous block. | 2026-11-19 | 2026-11-20 | 2026-11-19 | 2027-01-07 | 30 | not_started |  | exterior.siding FS 0 2026-11-23 2026-11-25 | roofing.shingles FS | roofing.shingles FS 0 |
| exterior.sheathing_wrb | structural_and_shell | exterior_finishes | exterior_finishes | Install WRB (weather-resistive barrier) | siding | work | 1 | 3 |  | 1 | exterior_finishes WRB after windows so flashing integrates. | 2026-11-18 | 2026-11-18 | 2026-11-18 | 2027-01-07 | 31.5 | not_started |  | milestone.dried_in FS 0 2026-11-19 2026-11-19 | framing.sheathing FS, windows.install FS | windows.install FS 0 |
| milestone.dried_in | structural_and_shell | envelope | roof_framing_roofing | Dried-in milestone | general | milestone | 0 | 0 |  | 0 | roof_framing_roofing Dried-in gates siding, not MEPs. | 2026-11-19 | 2026-11-19 | 2026-11-19 | 2027-01-08 | 31.5 | not_started |  |  | roofing.shingles FS, windows.install FS, exterior.sheathing_wrb FS | roofing.shingles FS 0, exterior.sheathing_wrb FS 0 |
| exterior.siding | structural_and_shell | exterior_finishes | exterior_finishes | Vinyl siding install | siding | work | 3 | 3 |  | 1 | exterior_finishes same-crew-exterior Continuous with roof trim/gutters — same crew. | 2026-11-23 | 2026-11-25 | 2026-11-23 | 2027-01-08 | 29.5 | not_started |  |  | milestone.dried_in FS, roofing.trim_gutters FS | roofing.trim_gutters FS 0 |
| plumbing.tank_set | rough_trades | rough_plumbing | hvac | Set tankless water heater | plumbing | work | 0.5 | 2 |  | 1 | hvac 4H Tankless set before plumbing rough-in per tank-set-first rule. | 2026-11-18 | 2026-11-18 | 2026-11-18 | 2026-11-20 | 2.5 | not_started |  | plumbing.rough_in FS 0 2026-11-19 2026-11-23 | roofing.underlayment FS, windows.install FS, checkpoint.tankless_arrived FS | roofing.underlayment FS 0, windows.install FS 0 |
| plumbing.rough_in | rough_trades | rough_plumbing | plumbing | Plumbing rough-in (master bath + W/D relocation) | plumbing | work | 3 | 2 |  | 2 | plumbing 4I Rough-in stubs into set tank; MEPs gated on underlayment + windows via tank_set. | 2026-11-19 | 2026-11-23 | 2026-11-19 | 2026-11-23 | 2 | not_started |  | inspect.rough_bundled FS 1 2026-11-25 2026-11-25 | plumbing.tank_set FS | plumbing.tank_set FS 0 |
| electrical.rough_in | rough_trades | rough_electrical | electrical | Electrical rough-in + subpanel install | electrical | work | 3 | 2 |  | 2 | electrical 4I Rough-in + 100A subpanel + elevator dedicated circuit. | 2026-11-18 | 2026-11-20 | 2026-11-18 | 2026-11-23 | 3 | not_started |  | hvac.minisplit_rough SS 1 2026-11-19 2026-11-20 | roofing.underlayment FS, windows.install FS, checkpoint.subpanel_arrived FS, prep.amperage_check FS | roofing.underlayment FS 0, windows.install FS 0 |
| electrical.gas_wh_vent | rough_trades | rough_plumbing | demolition_site_work | Extend gas WH vent through new roof | plumbing | work | 0.5 | 2 |  | 1 | demolition_site_work Extend existing gas WH vent (existing tank stays) through new roof after shingles. | 2026-11-19 | 2026-11-19 | 2026-11-19 | 2027-01-13 | 34 | not_started |  |  | roofing.shingles FS | roofing.shingles FS 0 |

| id | phase_id | component_id | section_id | name | trade | kind | duration_days | crew_size | pre_construction_offset_working_days | lead_up_working_days | derived_from | scheduled_start | scheduled_end | earliest_start | latest_start | float_days | status | lead_time_days | binding_successors_of_this | depends_on | binding_predecessors |
| --- | --- | --- | --- | --- | --- | --- | --- | --- | --- | --- | --- | --- | --- | --- | --- | --- | --- | --- | --- | --- | --- |
| hvac.minisplit_rough | rough_trades | rough_hvac | hvac | Mini-split line set rough | hvac | work | 1.5 | 1 |  | 1 | hvac 4G Mini-split line set only, 0.5d/1 person. | 2026-11-19 | 2026-11-20 | 2026-11-19 | 2026-11-24 | 3.5 | not_started |  |  | electrical.rough_in SS 1, roofing.underlayment FS, windows.install FS | electrical.rough_in SS 1 |
| inspect.rough_bundled | rough_inspections | rough_inspections | framing | Bundled rough inspection (elec + plumb + HVAC + framing) | inspector | inspection | 0.5 | 1 |  | 1 | framing 4C One inspector, one day, all four rough inspections. | 2026-11-25 | 2026-11-25 | 2026-11-25 | 2026-12-01 | 2 | not_started |  | buffer.post_rough_inspection FS 0 2026-11-30 2026-12-01 | electrical.rough_in FS 1, plumbing.rough_in FS 1, hvac.minisplit_rough FS 1, structural.remove_temp_shoring FS 1 | plumbing.rough_in FS 1 |
| buffer.post_rough_inspection | rough_inspections | rough_inspections | framing | Post-rough-inspection punch-list buffer | general | lead_time | 0 | 0 |  | 0 | framing 4D 2-day fix-and-re-inspect buffer. | 2026-11-30 | 2026-12-01 | 2026-11-30 | 2026-12-01 | 1.5 | not_started | 2 | insulation.install FS 0 2026-12-02 2026-12-02 | inspect.rough_bundled FS | inspect.rough_bundled FS 0 |
| insulation.install | insulation_and_drywall | insulation | insulation_air_sealing | Insulation & air sealing | insulation | work | 1 | 2 |  | 1 | insulation_air_sealing Batts for addition ~1 day. | 2026-12-02 | 2026-12-02 | 2026-12-02 | 2026-12-03 | 1.5 | not_started |  | inspect.insulation FS 1 2026-12-04 2026-12-04 | buffer.post_rough_inspection FS | buffer.post_rough_inspection FS 0 |
| inspect.insulation | insulation_and_drywall | insulation | insulation_air_sealing | Insulation inspection | inspector | inspection | 0.5 | 1 |  | 1 | insulation_air_sealing Insulation inspection before drywall. | 2026-12-04 | 2026-12-04 | 2026-12-04 | 2026-12-07 | 1.5 | not_started |  | drywall.consolidated FS 0 2026-12-07 2026-12-14 | insulation.install FS 1 | insulation.install FS 1 |
| drywall.consolidated | insulation_and_drywall | drywall | drywall | Drywall hang + tape + sand (addition + retrofit patches) | drywall | work | 6 | 3 |  | 2 | drywall drywall-consolidate Consolidated hang/finish for new addition + existing bedroom + hall bath patches. | 2026-12-07 | 2026-12-14 | 2026-12-07 | 2026-12-08 | 1 | not_started |  | paint.phase_1 FS -1 2026-12-14 2026-12-14, retrofit.electrical_switch_relocate FS -1 2026-12-14 2026-12-14, retrofit.hall_bath_window_infill FS -2 2026-12-11 2026-12-11 | inspect.insulation FS | inspect.insulation FS 0 |
| paint.phase_1 | insulation_and_drywall | paint_phase1 | interior_finish | Paint phase 1 — primer walls+ceilings AM, ceiling finish PM | paint | work | 1 | 2 |  | 1 | interior_finish 4E 1d covers primer (walls + ceilings) AM + ceiling finish coat PM same day per Will's standard sequence. | 2026-12-14 | 2026-12-14 | 2026-12-14 | 2026-12-15 | 1 | not_started |  | tile.shower_substrate FS 0 2026-12-15 2026-12-16 | drywall.consolidated FS -1, order.paint FS | drywall.consolidated FS -1 |
| tile.shower_substrate | interior_finishes | tile_work | master_bath | Waterproofing + shower substrate (Kerdi/Wedi) | tile | work | 2 | 2 |  | 1 | master_bath Waterproofing standard; no compromise. | 2026-12-15 | 2026-12-16 | 2026-12-15 | 2026-12-16 | 1 | not_started |  | flooring.install FS 0 2026-12-17 2026-12-18, tile.shower_install FS 0 2026-12-17 2026-12-22 | paint.phase_1 FS, checkpoint.tile_arrived FS | paint.phase_1 FS 0 |
| tile.shower_install | interior_finishes | tile_work | master_bath | Custom tile shower install | tile | work | 4 | 2 |  | 0 | master_bath Wall tile ~30 sqft/day custom shower. | 2026-12-17 | 2026-12-22 | 2026-12-17 | 2026-12-18 | 1 | not_started |  | tile.grout_seal FS 1 2026-12-28 2026-12-28 | tile.shower_substrate FS | tile.shower_substrate FS 0 |
| tile.grout_seal | interior_finishes | tile_work | master_bath | Tile grout + seal | tile | work | 1 | 2 |  | 0 | master_bath Cure lag after tile before grout. | 2026-12-28 | 2026-12-28 | 2026-12-28 | 2026-12-29 | 1 | not_started |  | glazing.shower_install FS 0 2026-12-29 2026-12-29, plumbing.finish FS 0 2026-12-29 2026-12-30 | tile.shower_install FS 1 | tile.shower_install FS 1 |
| flooring.install | interior_finishes | flooring | interior_finish | Flooring install (LVT) | flooring | work | 2 | 2 |  | 1 | interior_finish 4L Flooring after paint phase 1; parallel with tile. | 2026-12-17 | 2026-12-18 | 2026-12-17 | 2026-12-22 | 3 | not_started |  | cabinets.vanity_install FS 0 2026-12-21 2026-12-21, trim.install FS 0 2026-12-21 2026-12-23 | paint.phase_1 FS, tile.shower_substrate FS, checkpoint.lvt_arrived FS | tile.shower_substrate FS 0 |
| trim.install | interior_finishes | trim | interior_finish | Interior trim/base/case | trim_carpentry | work | 3 | 2 |  | 1 | interior_finish 4L Trim after flooring, before paint phase 2. | 2026-12-21 | 2026-12-23 | 2026-12-21 | 2026-12-29 | 4 | not_started |  |  | flooring.install FS | flooring.install FS 0 |
| cabinets.vanity_install | interior_finishes | cabinets_vanity | master_bath | Install vanity + closet built-ins | cabinets | work | 1 | 2 |  | 1 | master_bath Vanity install after flooring. | 2026-12-21 | 2026-12-21 | 2026-12-21 | 2026-12-28 | 3 | not_started |  | electrical.finish FS 0 2026-12-22 2026-12-23 | flooring.install FS, checkpoint.vanity_arrived FS | flooring.install FS 0 |
| retrofit.hall_bath_window_infill | interior_finishes | hall_bath_mod | hall_bath_bedroom_closeout | Hall bath modification (framing/patch) | framing | work | 1 | 2 |  | 1 | hall_bath_bedroom_closeout retrofit-heuristic Retrofit hall bath modification — separate component per retrofit heuristic. Rolls into consolidated drywall block. | 2026-12-11 | 2026-12-11 | 2026-12-11 | 2027-01-12 | 19.5 | not_started |  |  | drywall.consolidated FS -2 | drywall.consolidated FS -2 |
| retrofit.electrical_switch_relocate | interior_finishes | hall_bath_mod | electrical | Relocate hallway switch (patch/prime/paint) | electrical | work | 0.5 | 1 |  | 1 | electrical retrofit-heuristic Existing hallway switch relocation — retrofit item, includes drywall patch bundled into consolidated drywall. | 2026-12-14 | 2026-12-14 | 2026-12-14 | 2027-01-13 | 19 | not_started |  |  | drywall.consolidated FS -1 | drywall.consolidated FS -1 |
| paint.phase_2 | interior_finishes | paint_phase2 | interior_finish | Paint phase 2 — final wall coat | paint | work | 1 | 2 |  | 1 | interior_finish 4E, 4F Paint phase 2 gates on ALL finish trades. | 2026-12-31 | 2026-12-31 | 2026-12-31 | 2027-01-04 | 1 | not_started |  | milestone.substantial_completion FS 0 2027-01-04 2027-01-04 | trim.install FS, flooring.install FS, cabinets.vanity_install FS, tile.grout_seal FS, plumbing.finish FS, electrical.finish FS, hvac.minisplit_install FS | plumbing.finish FS 0 |
| milestone.substantial_completion | interior_finishes | paint_phase2 | interior_finish | Substantial completion | general | milestone | 0 | 0 |  | 0 | interior_finish 4F Fires at end of paint phase 2. | 2027-01-04 | 2027-01-04 | 2027-01-04 | 2027-01-05 | 1 | not_started |  | closeout.pm_walkthrough FS 0 2027-01-04 2027-01-04 | paint.phase_2 FS | paint.phase_2 FS 0 |
| electrical.finish | finish_trades | finish_electrical | electrical | Electrical finish — recessed, vanity lights, dimmers, fan/light, outlets | electrical | work | 2 | 2 |  | 1 | electrical 4L Finish trim-out after paint phase 1. | 2026-12-22 | 2026-12-23 | 2026-12-22 | 2026-12-29 | 3 | not_started |  | hvac.minisplit_install FS 0 2026-12-28 2026-12-28 | paint.phase_1 FS, cabinets.vanity_install FS | cabinets.vanity_install FS 0 |
| plumbing.finish | finish_trades | finish_plumbing | plumbing | Plumbing finish — fixtures + sink hookups | plumbing | work | 2 | 2 |  | 1 | plumbing 4L Finish plumbing after cabinets, flooring, tile grout. | 2026-12-29 | 2026-12-30 | 2026-12-29 | 2026-12-30 | 1 | not_started |  | paint.phase_2 FS 0 2026-12-31 2026-12-31 | cabinets.vanity_install FS, flooring.install FS, tile.grout_seal FS | tile.grout_seal FS 0 |
| hvac.minisplit_install | finish_trades | finish_hvac | hvac | Mini-split head install & commission | hvac | work | 1 | 1 |  | 1 | hvac 4J, 4N Mini-split day-of. Serialized after electrical.finish per 2-trades-max stagger rule. | 2026-12-28 | 2026-12-28 | 2026-12-28 | 2026-12-31 | 3 | not_started |  |  | paint.phase_1 FS, checkpoint.minisplit_arrived FS, electrical.finish FS | electrical.finish FS 0 |
| glazing.shower_install | finish_trades | finish_plumbing | master_bath | Install shower glass enclosure | glazing | work | 0.5 | 2 |  | 0 | master_bath Shower glass after tile grout + fab. | 2026-12-29 | 2026-12-29 | 2026-12-29 | 2027-01-13 | 10 | not_started |  |  | checkpoint.shower_glass_arrived FS, tile.grout_seal FS | tile.grout_seal FS 0 |
| closeout.pm_walkthrough | closeout | punch_and_final | hall_bath_bedroom_closeout | PM walkthrough & punch list creation | pm | work | 0.5 | 1 |  | 1 | hall_bath_bedroom_closeout PM walkthrough after substantial completion. | 2027-01-04 | 2027-01-04 | 2027-01-04 | 2027-01-05 | 1 | not_started |  | closeout.punch_work FS 0 2027-01-05 2027-01-06 | milestone.substantial_completion FS | milestone.substantial_completion FS 0 |
| closeout.punch_work | closeout | punch_and_final | hall_bath_bedroom_closeout | Punch-list work (multi-trade returns) | general | work | 2 | 2 |  | 1 | hall_bath_bedroom_closeout Combined punch trade returns. | 2027-01-05 | 2027-01-06 | 2027-01-05 | 2027-01-05 | 0.5 | not_started |  | closeout.final_clean FS 0 2027-01-07 2027-01-07 | closeout.pm_walkthrough FS | closeout.pm_walkthrough FS 0 |
| closeout.final_clean | closeout | punch_and_final | hall_bath_bedroom_closeout | Final clean | cleanup | work | 1 | 2 |  | 0 | hall_bath_bedroom_closeout Final clean before final inspection. | 2027-01-07 | 2027-01-07 | 2027-01-07 | 2027-01-07 | 0.5 | not_started |  | inspect.final_bundled FS 1 2027-01-11 2027-01-11 | closeout.punch_work FS | closeout.punch_work FS 0 |
| inspect.final_bundled | closeout | punch_and_final | hall_bath_bedroom_closeout | Bundled final inspection (E/P/M + building) | inspector | inspection | 0.5 | 1 |  | 1 | hall_bath_bedroom_closeout 4M One inspector, one day, all finals. | 2027-01-11 | 2027-01-11 | 2027-01-11 | 2027-01-11 | 0.5 | not_started |  | closeout.wills_walkthrough FS 1 2027-01-13 2027-01-13 | closeout.final_clean FS 1 | closeout.final_clean FS 1 |
| closeout.wills_walkthrough | closeout | punch_and_final | hall_bath_bedroom_closeout | Will's final walkthrough with customer | general | work | 0.5 | 1 |  | 1 | hall_bath_bedroom_closeout addition-wills-walkthrough Will's personal final walkthrough — end of project. | 2027-01-13 | 2027-01-13 | 2027-01-13 | 2027-01-13 | 0 | not_started |  |  | inspect.final_bundled FS 1 | inspect.final_bundled FS 1 |
| pm.meet_howie_tdec | pre_construction | tdec_septic |  | Meeting with Howie — 1 week after TDEC permit start | pm | coordination | 1 | 1 | 1 |  | tdec_septic PM directive: set a meeting with Howie one week after start of TDEC permit (SS+5 working days on permit.tdec_septic). | 2026-10-09 | 2026-10-09 | 2026-10-09 | 2027-01-12 | 60.5 | not_started |  |  | permit.tdec_septic SS 5 |  |
